# 返利计划1

Schedule from MS Project, 2016-11-07 to 2016-11-08.

## Calendars

- 标准: Mon-Fri 08:00-12:00, 13:00-17:00; Sat-Sun off.

## Resources

| Resource |
| --- |
| 丁连富 |
| 陈伟 |
| 尹科 |
| 达飞 |
| 姚宁 |
| 北京 |
| 刘斌 |
| 永江 |
| 晓佳 |
| 连富 |

## Schedule

| ID | Task | Duration | Start | Finish | Predecessors | Total slack | Free slack | Constraint | Resources | Work |
| --- | --- | --- | --- | --- | --- | --- | --- | --- | --- | --- |
| 1 | 数据库新建支付方式配置表 | 2h | 2016-11-07 08:00 | 2016-11-07 10:00 |  | 0.38d | 0d | start no earlier than 2016-11-07 08:00 | 连富 | 2h |
| 2 | 修改订单表结构保存支付方式和支付通道信息 | 3h | 2016-11-07 10:00 | 2016-11-07 14:00 | 1 | 0.38d | 0d |  | 连富 | 3h |
| 3 | 数据库新建卖家支付方式存储数据结构 | 3h | 2016-11-07 14:00 | 2016-11-07 17:00 | 2 | 0.38d | 0d |  | 连富 | 3h |
| 4 | 修改所有支付报文及支付成功回写内容 | 4h | 2016-11-08 08:00 | 2016-11-08 12:00 | 3 | 0.12d | 0d |  | 连富 | 4h |
| 5 | 维护现有老数据的脚本 | 3h | 2016-11-08 13:00 | 2016-11-08 16:00 | 4 | 0.12d |  |  | 连富 | 3h |
| 6 | 修改买家订单中心页面 | 2h | 2016-11-07 08:00 | 2016-11-07 10:00 |  | 0.75d | 0d | start no earlier than 2016-11-07 08:00 | 永江 | 2h |
| 7 | 修改卖家订单中心 | 2h | 2016-11-07 10:00 | 2016-11-07 12:00 | 6 | 0.75d | 0d |  | 永江 | 2h |
| 8 | 修改订单终端页 | 2h | 2016-11-07 13:00 | 2016-11-07 15:00 | 7 | 0.75d | 0d |  | 永江 | 2h |
| 9 | 订单预览页面修改可选的支付方式 | 4h | 2016-11-07 15:00 | 2016-11-08 10:00 | 8 | 0.75d |  |  | 永江 | 4h |
| 10 | 修改订单预览接口+订单预览页面 | 4h | 2016-11-07 13:00 | 2016-11-07 17:00 |  | 0.12d | 0d | start no earlier than 2016-11-07 08:00 | 陈伟 | 4h |
| 11 | 平台“卖家管理”新增“支付设置页面” | 4h | 2016-11-08 08:00 | 2016-11-08 12:00 | 10 | 0.12d | 0d |  | 陈伟 | 4h |
| 12 | 卖家默认全部支付方式，读取卖家支付方式+修改的接口 | 3h | 2016-11-08 13:00 | 2016-11-08 16:00 | 11 | 0.12d |  |  | 陈伟 | 3h |
| 13 | 订单综合查询页面+订单导出 | 3h | 2016-11-07 08:00 | 2016-11-07 11:00 |  | 1.62d |  | start no earlier than 2016-11-07 08:00 | 达飞 | 3h |
| 14 | UI支付设置页面效果图 | 5h | 2016-11-07 08:00 | 2016-11-07 14:00 |  | 1.88d | 0d | start no earlier than 2016-11-07 08:00 | 晓佳 | 5h |
| 15 | UI支付修改相关页面的效果调整 | 3h | 2016-11-07 14:00 | 2016-11-07 17:00 | 14 | 1.88d |  |  | 晓佳 | 3h |
| 16 | wap端接口修改 | 16h | 2016-11-07 08:00 | 2016-11-08 17:00 |  | 0d |  | start no earlier than 2016-11-07 08:00 | 尹科 | 16h |
| 17 | 维护新老版本的接口 | 4h | 2016-11-07 08:00 | 2016-11-07 12:00 |  | 1.5d |  | start no earlier than 2016-11-07 08:00 | 陈伟; 丁连富 | 8h |
