# 返利计划1

Schedule from MS Project, 2016-11-08 to 2016-11-11, A marks actual dates.

## Calendars

- 标准: Mon-Fri 08:00-12:00, 13:00-17:00; Sat-Sun off.

## Resources

| Resource |
| --- |
| 丁连富 |
| 陈伟 |
| 尹科 |
| 达飞 |
| 姚宁 |
| 北京 |
| 刘斌 |
| 永江 |
| 晓佳 |
| 连富 |

## Schedule

| ID | Task | Duration | Start | Finish | Predecessors | Complete | Constraint | Resources | Work | Actual work |
| --- | --- | --- | --- | --- | --- | --- | --- | --- | --- | --- |
| 1 | 运费规则表新增是否到付 | 1h | 2016-11-08 08:00 A | 2016-11-08 09:00 A |  | 100% | start no earlier than 2016-11-08 08:00 | 达飞 | 1h | 1h |
| 2 | 订单详情表新增是否到付列 | 1h | 2016-11-08 09:00 A | 2016-11-08 10:00 A | 1 | 100% |  | 达飞 | 1h | 1h |
| 3 | 订单详情页接口修改 | 3h | 2016-11-08 10:00 A | 2016-11-08 14:00 A | 2 | 100% |  | 达飞 | 3h | 3h |
| 4 | 运费规则新增功能 | 2h | 2016-11-08 08:00 A | 2016-11-08 10:00 A |  | 100% | start no earlier than 2016-11-08 08:00 | 陈伟 | 2h | 2h |
| 5 | 运费规则修改接口 | 2h | 2016-11-08 10:00 A | 2016-11-08 12:00 A | 4 | 100% |  | 陈伟 | 2h | 2h |
| 6 | 订单预览返回新的运费给前端 | 2h | 2016-11-10 15:00 A | 2016-11-10 17:00 A | 8 | 100% |  | 陈伟 | 2h | 2h |
| 7 | 订单生成时，写运费到订单表+订单详情表 | 3h | 2016-11-08 08:00 A | 2016-11-08 11:00 A |  | 100% | start no earlier than 2016-11-08 08:00 | 连富 | 3h | 3h |
| 8 | 新增运费计算规则函数 | 20h | 2016-11-08 10:00 A | 2016-11-10 15:00 A | 2 | 100% |  | 尹科 | 20h | 20h |
| 9 | wap端接口 | 2h | 2016-11-10 15:00 A | 2016-11-10 17:00 A | 8 | 100% |  | 尹科 | 2h | 2h |
| 10 | 前端运费规则添加页面修改 | 2h | 2016-11-08 13:00 A | 2016-11-08 15:00 A | 5 | 100% |  | 刘斌 | 2h | 2h |
| 11 | 前端运费规则列表页面修改 | 3h | 2016-11-08 15:00 A | 2016-11-09 09:00 A | 10 | 100% |  | 刘斌 | 3h | 3h |
| 12 | 前端运费规则修改页面修改 | 2h | 2016-11-09 09:00 A | 2016-11-09 11:00 A | 11, 10 | 100% |  | 刘斌 | 2h | 2h |
| 13 | 前端订单预览页面修改 | 4h | 2016-11-11 08:00 A | 2016-11-11 12:00 A | 6 | 100% |  | 永江 | 4h | 4h |
| 14 | 前端订单详情页面修改 | 4h | 2016-11-08 14:00 A | 2016-11-09 09:00 A | 3, 12 | 100% |  | 永江 | 4h | 4h |
