# 返利计划1

Schedule from MS Project, 2016-11-03 to 2016-11-08, A marks actual dates.

## Calendars

- 标准: Mon-Fri 08:00-12:00, 13:00-17:00; Sat-Sun off.

## Resources

| Resource |
| --- |
| 丁连富 |
| 陈伟 |
| 尹科 |
| 达飞 |
| 姚宁 |
| 北京 |
| 刘斌 |
| 永江 |
| 晓佳 |

## Schedule

| ID | Task | Duration | Start | Finish | Predecessors | Complete | Remaining | Total slack | Free slack | Constraint | Resources | Work | Actual work | Text1 |
| --- | --- | --- | --- | --- | --- | --- | --- | --- | --- | --- | --- | --- | --- | --- |
| 1 | 短信发送功能 | 3h | 2016-11-03 08:00 A | 2016-11-03 11:00 A |  | 100% |  |  |  | start no earlier than 2016-11-03 08:00 | 丁连富 | 3h | 3h |  |
| 2 | 短信验证功能 | 2h | 2016-11-03 11:00 A | 2016-11-03 14:00 A | 1 | 100% |  |  |  | start no earlier than 2016-11-03 08:00 | 丁连富 | 2h | 2h |  |
| 3 | 返利表结构创建 | 2h | 2016-11-03 14:00 A | 2016-11-03 16:00 A | 2 | 100% |  |  |  |  | 丁连富 | 2h | 2h |  |
| 4 | 返利状态字典表 | 1h | 2016-11-03 16:00 A | 2016-11-03 17:00 A | 3 | 100% |  |  |  |  | 丁连富 | 1h | 1h |  |
| 5 | 获取卖家所有买家信息 | 2h | 2016-11-04 08:00 A | 2016-11-04 10:00 A | 4 | 100% |  |  |  |  | 丁连富 | 2h | 2h |  |
| 6 | 订单表新增返利金额字段 | 2h | 2016-11-04 10:00 A | 2016-11-04 12:00 A | 5 | 100% |  |  |  |  | 丁连富 | 2h | 2h |  |
| 7 | 订单生成前验证返利金额 | 3h | 2016-11-04 13:00 A | 2016-11-04 16:00 A | 6 | 100% |  |  |  |  | 丁连富 | 3h | 3h |  |
| 8 | 订单生成新增写返利金额 | 3h | 2016-11-04 16:00 A | 2016-11-07 10:00 A | 7 | 100% |  |  |  |  | 丁连富 | 3h | 3h |  |
| 9 | 退换货流程修改 | 4h | 2016-11-07 10:00 A | 2016-11-07 15:00 A | 8 | 100% |  |  |  |  | 丁连富 | 4h | 4h |  |
| 10 | 订单改价 | 8h | 2016-11-03 11:00 A | 2016-11-04 11:00 A | 11 | 100% |  |  |  |  | 陈伟 | 8h | 8h |  |
| 11 | 订单预览返回卖家订单总额+可用金额 | 3h | 2016-11-03 08:00 A | 2016-11-03 11:00 A |  | 100% |  |  |  | start no earlier than 2016-11-03 08:00 | 陈伟 | 3h | 3h |  |
| 12 | 前端卖家返利管理 | 5h | 2016-11-04 08:00 A | 2016-11-04 14:00 | 33 | 50% | 2.5h | 1d | 0d |  | 刘斌 | 5h | 2.5h |  |
| 13 | 前端卖家新增返利 | 5h | 2016-11-04 14:00 A | 2016-11-07 10:00 A | 12 | 100% |  |  |  |  | 刘斌 | 5h | 5h |  |
| 14 | 前端买家返利记录页面 | 3h | 2016-11-07 10:00 A | 2016-11-07 14:00 A | 13 | 100% |  |  |  |  | 刘斌 | 3h | 3h | 尹科 |
| 15 | 买家返利记录获取 | 2h | 2016-11-03 08:00 A | 2016-11-03 10:00 A |  | 100% |  |  |  | start no earlier than 2016-11-03 08:00 | 尹科 | 2h | 2h |  |
| 16 | 买家返利按店铺汇总 | 2h | 2016-11-03 10:00 A | 2016-11-03 12:00 A | 15 | 100% |  |  |  |  | 尹科 | 2h | 2h |  |
| 17 | 导入EXCEL | 1d | 2016-11-04 14:00 | 2016-11-07 14:00 | 12 |  |  | 1d |  |  | 尹科 | 8h |  |  |
| 18 | 导出EXCEL | 1d | 2016-11-07 14:00 A | 2016-11-08 14:00 A | 17 | 100% |  |  |  |  | 尹科 | 8h | 8h |  |
| 19 | 卖家新增返利信息 | 3h | 2016-11-03 08:00 A | 2016-11-03 11:00 A |  | 100% |  |  |  | start no earlier than 2016-11-03 08:00 | 达飞 | 3h | 3h |  |
| 20 | 卖家发送返利信息 | 3h | 2016-11-03 11:00 A | 2016-11-03 15:00 A | 19 | 100% |  |  |  |  | 达飞 | 3h | 3h |  |
| 21 | 订单返利使用比例设置 | 2h | 2016-11-03 15:00 A | 2016-11-03 17:00 A | 20 | 100% |  |  |  |  | 达飞 | 2h | 2h |  |
| 22 | 卖家订单综合查询 | 3h | 2016-11-04 08:00 A | 2016-11-04 11:00 A | 21 | 100% |  |  |  |  | 达飞 | 3h | 3h |  |
| 23 | 卖家订单综合查询的导出功能 | 3h | 2016-11-04 11:00 A | 2016-11-04 15:00 A | 22 | 100% |  |  |  |  | 达飞 | 3h | 3h |  |
| 24 | 平台订单综合查询 | 3h | 2016-11-04 15:00 A | 2016-11-07 09:00 A | 23 | 100% |  |  |  |  | 达飞 | 3h | 3h |  |
| 25 | 平台订单综合查询导出 | 3h | 2016-11-07 09:00 A | 2016-11-07 12:00 A | 24 | 100% |  |  |  |  | 达飞 | 3h | 3h |  |
| 26 | 前端平台订单综合查询修改 | 1h | 2016-11-07 13:00 A | 2016-11-07 14:00 A | 25 | 100% |  |  |  |  | 达飞 | 1h | 1h |  |
| 27 | 前端卖家订单综合查询修改 | 1h | 2016-11-07 14:00 A | 2016-11-07 15:00 A | 26 | 100% |  |  |  |  | 达飞 | 1h | 1h |  |
| 28 | wap修改订单预览接口 | 3h | 2016-11-04 08:00 A | 2016-11-04 11:00 A | 21 | 100% |  |  |  |  | 姚宁 | 3h | 3h |  |
| 29 | wap端修改订单生成接口 | 3h | 2016-11-04 11:00 A | 2016-11-04 15:00 A | 28 | 100% |  |  |  |  | 姚宁 | 3h | 3h |  |
| 30 | wap端新增买家返利数据接口 | 3h | 2016-11-04 15:00 A | 2016-11-07 09:00 A | 29 | 100% |  |  |  |  | 姚宁 | 3h | 3h |  |
| 31 | wap端新增返利汇总接口 | 3h | 2016-11-07 09:00 A | 2016-11-07 12:00 A | 30 | 100% |  |  |  |  | 姚宁 | 3h | 3h |  |
| 32 | 前端订单预览页面修改 | 4h | 2016-11-03 11:00 A | 2016-11-03 16:00 A | 11 | 100% |  |  |  |  | 永江 | 4h | 4h |  |
| 33 | UI卖家返利管理页面设计 | 8h | 2016-11-03 08:00 A | 2016-11-03 17:00 A |  | 100% |  |  |  | start no earlier than 2016-11-03 08:00 | 晓佳 | 8h | 8h |  |
| 34 | UI卖家返利新增页面设计 | 8h | 2016-11-04 08:00 A | 2016-11-04 17:00 A | 33 | 100% |  |  |  |  | 晓佳 | 8h | 8h |  |
